# SmartUll

Schedule from ProjectLibre, 2022-01-03 to 2022-12-29.

## Calendars

- SmartUll: Mon-Fri 08:00-15:00; Sat-Sun off. Exceptions (off unless hours are given): 2022-01-06, 2022-02-02, 2022-04-13 to 2022-04-15, 2022-05-29 to 2022-05-30, 2022-08-14 to 2022-08-15, 2022-09-07 to 2022-09-08, 2022-09-14 to 2022-09-16, 2022-10-02 to 2022-10-03, 2022-10-11 to 2022-10-12, 2022-11-01, 2022-12-06, 2022-12-08, 2022-12-26.

## Resources

| Resource | Rate |
| --- | --- |
| No Asignado |  |
| Expertos bases de datos | 14 |
| ProgramadorA | 12 |
| ProgramadorB | 12 |
| ProgramadorC | 12 |
| Analista | 15 |
| Instalador sensor A | 11 |
| Instalador sensor B | 11 |
| Electricista | 10 |
| Sensores de parking |  |
| Sensores de Aula |  |
| Barreras |  |
| Pantallas led |  |
| Encargado Mantenimiento | 10 |

## Schedule

| ID | WBS | Task | Duration | Start | Finish | Predecessors | Constraint |
| --- | --- | --- | --- | --- | --- | --- | --- |
| 1 | 1 | **Documentos de Análisis** | 10d | 2022-01-03 | 2022-01-19 |  | start no earlier than 2022-01-03 |
| 2 | 1.1 | **ACP** | 7.25d | 2022-01-03 | 2022-01-14 |  |  |
| 3 | 1.1.1 | Definición de objetivos, alcance y justificación | 2d | 2022-01-03 | 2022-01-05 |  |  |
| 4 | 1.1.2 | Entrevistas con interesados | 3d | 2022-01-06 | 2022-01-12 | 3 | start no earlier than 2022-01-06 |
| 5 | 1.1.3 | Aprobación del acp | 1d | 2022-01-13 | 2022-01-14 | 4 | start no earlier than 2022-01-13 |
| 6 | 1.2 | **PDP** | 2.75d | 2022-01-14 | 2022-01-19 | 2 | start no earlier than 2022-01-14 |
| 7 | 1.2.1 | Descripción y objetivos del proyectos | 2d | 2022-01-14 | 2022-01-18 |  |  |
| 8 | 1.2.2 | Alcance, requisitos y EDT | 2.7d | 2022-01-14 | 2022-01-19 | 7SS | start no earlier than 2022-01-14 |
| 9 | 1.2.3 | Organización, responsabilidades y metodologías | 2d | 2022-01-14 | 2022-01-18 | 7SS | start no earlier than 2022-01-14 |
| 10 | 1.2.4 | Tiempos y costos | 2.12d | 2022-01-14 | 2022-01-18 | 7SS | start no earlier than 2022-01-12 |
| 11 | 1.2.5 | Estudios Zonas críticas | 1d | 2022-01-18 | 2022-01-19 | 7SS | start no earlier than 2022-01-18 |
| 12 | 2 | **Calidad Aire** | 26.75d | 2022-01-20 | 2022-03-07 | 6 | start no earlier than 2022-01-20 |
| 13 | 2.1 | **Materiales** | 14d | 2022-01-20 | 2022-02-14 |  | start no earlier than 2022-01-10 |
| 14 | 2.1.1 | Recopilacion | 1.2d | 2022-01-20 | 2022-01-21 |  | start no earlier than 2022-01-14 |
| 15 | 2.1.2 | Busqueda | 3.2d | 2022-01-20 | 2022-01-26 | 14SS | start no earlier than 2022-01-20 |
| 16 | 2.1.3 | Compra | 1.3d | 2022-01-26 | 2022-01-27 | 15 | start no earlier than 2022-01-20 |
| 17 | 2.1.4 | Distribución | 7d | 2022-02-01 | 2022-02-14 | 16 | start no earlier than 2022-02-01 |
| 18 | 2.2 | **Instalacion Recursos** | 8.25d | 2022-02-14 | 2022-02-25 | 13 | start no earlier than 2022-02-04 |
| 19 | 2.2.1 | Preparacion materiales | 2d | 2022-02-14 | 2022-02-16 |  | start no earlier than 2022-01-31 |
| 20 | 2.2.2 | Instalar sensores | 6.25d | 2022-02-16 | 2022-02-25 | 19 | start no earlier than 2022-02-08 |
| 21 | 2.2.3 | Instalar medios de información | 2.2d | 2022-02-16 | 2022-02-21 | 20SS | start no earlier than 2022-02-08 |
| 22 | 2.3 | **Pruebas** | 4.5d | 2022-02-28 | 2022-03-07 | 18 | start no earlier than 2022-02-16 |
| 23 | 2.3.1 | Testeo sensores | 3.5d | 2022-02-28 | 2022-03-03 |  | start no earlier than 2022-02-17 |
| 24 | 2.3.2 | Testeo de pantallas | 2d | 2022-02-28 | 2022-03-02 | 23SS | start no earlier than 2022-02-17 |
| 25 | 2.3.3 | Verificar pruebas | 1d | 2022-03-04 | 2022-03-07 | 23 | start no earlier than 2022-02-17 |

| ID | WBS | Task | Duration | Start | Finish | Predecessors | Constraint |
| --- | --- | --- | --- | --- | --- | --- | --- |
| 26 | 3 | **Aparcamientos** | 20.2d | 2022-01-20 | 2022-02-23 | 6 | start no earlier than 2022-01-20 |
| 27 | 3.1 | **Materiales** | 13d | 2022-01-20 | 2022-02-11 |  |  |
| 28 | 3.1.1 | Recopilacion | 2.3d | 2022-01-20 | 2022-01-25 |  | start no earlier than 2022-01-17 |
| 29 | 3.1.2 | Busqueda | 2.4d | 2022-01-20 | 2022-01-25 | 28SS | start no earlier than 2022-01-14 |
| 30 | 3.1.3 | Compra | 1d | 2022-01-25 | 2022-01-26 | 29 | start no earlier than 2022-01-17 |
| 31 | 3.1.4 | Distribución | 6d | 2022-02-01 | 2022-02-11 | 30 | start no earlier than 2022-02-01 |
| 32 | 3.2 | **Instalacion Recursos** | 6.2d | 2022-02-11 | 2022-02-22 | 27 | start no earlier than 2022-02-01 |
| 33 | 3.2.1 | Preparación de los materiales | 2d | 2022-02-11 | 2022-02-15 |  | start no earlier than 2022-02-04 |
| 34 | 3.2.2 | Instalar sensores | 3d | 2022-02-15 | 2022-02-21 | 33 | start no earlier than 2022-02-08 |
| 35 | 3.2.3 | Instalar barreras y lectores | 4.2d | 2022-02-15 | 2022-02-22 | 34SS | start no earlier than 2022-02-08 |
| 36 | 3.2.4 | Instalar pantallas | 2.2d | 2022-02-15 | 2022-02-18 | 35SS | start no earlier than 2022-02-08 |
| 37 | 3.3 | **Pruebas** | 1d | 2022-02-22 | 2022-02-23 | 32 | start no earlier than 2022-02-15 |
| 38 | 3.3.1 | Testeo de paneles led | 1d | 2022-02-22 | 2022-02-23 |  | start no earlier than 2022-02-17 |
| 39 | 3.3.2 | Testeo de sensores de discapacitados | 1d | 2022-02-22 | 2022-02-23 | 38SS | start no earlier than 2022-02-17 |
| 40 | 3.3.3 | Testeo de tarjetas | 1d | 2022-02-22 | 2022-02-23 | 38SS | start no earlier than 2022-02-17 |
| 41 | 3.3.4 | Testeo barreras | 1d | 2022-02-22 | 2022-02-23 | 38SS | start no earlier than 2022-02-17 |
| 42 | 4 | **Software** | 19.95d | 2022-03-11 | 2022-04-18 | 12, 26 | start no earlier than 2022-02-18 |
| 43 | 4.1 | **Planteamiento** | 5d | 2022-03-11 | 2022-03-21 |  | start no earlier than 2022-02-18 |
| 44 | 4.1.1 | **Verificar informacion** | 2d | 2022-03-11 | 2022-03-15 |  | start no earlier than 2022-03-11 |
| 45 | 4.1.1.1 | Verificar aforo de aparcamientos | 2d | 2022-03-11 | 2022-03-15 |  | start no earlier than 2022-02-16 |
| 46 | 4.1.1.2 | Verificar calidad del aire | 2d | 2022-03-11 | 2022-03-15 | 45SS | start no earlier than 2022-02-18 |
| 47 | 4.1.2 | **Planificar** | 3d | 2022-03-16 | 2022-03-21 | 44 | start no earlier than 2022-02-16 |
| 48 | 4.1.2.1 | Planificar el desarrollo | 2d | 2022-03-16 | 2022-03-18 |  | start no earlier than 2022-02-18 |
| 49 | 4.1.2.2 | Planificar la gestión de los datos | 3d | 2022-03-16 | 2022-03-21 | 48SS | start no earlier than 2022-02-18 |
| 50 | 4.1.2.3 | Planificar los objetivos a alcanzar | 2.2d | 2022-03-16 | 2022-03-18 | 48SS | start no earlier than 2022-02-18 |

| ID | WBS | Task | Duration | Start | Finish | Predecessors | Constraint |
| --- | --- | --- | --- | --- | --- | --- | --- |
| 51 | 4.2 | **Desarrollo** | 8.95d | 2022-03-21 | 2022-04-04 | 43 | start no earlier than 2022-02-18 |
| 52 | 4.2.1 | Desarrollo de BBDD | 3.7d | 2022-03-21 | 2022-03-25 |  |  |
| 53 | 4.2.2 | **Gestion informacion** | 5.25d | 2022-03-25 | 2022-04-04 | 52 | start no earlier than 2022-02-18 |
| 54 | 4.2.2.1 | Gestión de los datos del aire | 3.25d | 2022-03-25 | 2022-03-31 |  |  |
| 55 | 4.2.2.2 | Gestión de los datos del aparcamiento | 3.25d | 2022-03-25 | 2022-03-31 | 54SS | start no earlier than 2022-02-18 |
| 56 | 4.2.2.3 | Separación de los datos de aire y aparcamiento | 2d | 2022-03-31 | 2022-04-04 | 55, 54 | start no earlier than 2022-02-14 |
| 57 | 4.2.3 | **Desarrollo de app** | 4.2d | 2022-03-21 | 2022-03-28 | 52SS | start no earlier than 2022-02-18 |
| 58 | 4.2.3.1 | Frontend | 1d | 2022-03-21 | 2022-03-22 |  | start no earlier than 2022-02-15 |
| 59 | 4.2.3.2 | Backend | 4.2d | 2022-03-21 | 2022-03-28 | 58SS | start no earlier than 2022-02-11 |
| 60 | 4.3 | **Pruebas** | 6d | 2022-04-04 | 2022-04-18 | 51 | start no earlier than 2022-02-17 |
| 61 | 4.3.1 | Prueba obtencion de datos | 3d | 2022-04-04 | 2022-04-08 |  | start no earlier than 2022-02-14 |
| 62 | 4.3.2 | Testeo de sensores | 3d | 2022-04-04 | 2022-04-08 | 61SS | start no earlier than 2022-02-15 |
| 63 | 4.3.3 | Testeo de aforos | 2.2d | 2022-04-04 | 2022-04-07 | 62SS | start no earlier than 2022-02-16 |
| 64 | 4.3.4 | Testeo calidad de aire | 2.5d | 2022-04-04 | 2022-04-07 | 61SS | start no earlier than 2022-02-17 |
| 65 | 4.3.5 | Verificación de pruebas | 3d | 2022-04-08 | 2022-04-18 | 61, 62, 63, 64 | start no earlier than 2022-02-17 |
| 66 | 5 | Mantenimiento | 138.68d | 2022-05-03 | 2022-12-29 | 42 | start no earlier than 2022-05-03 |
